# Carta Gantt Hostal v2

Schedule from MS Project, 2018-03-13 to 2018-04-24, A marks actual dates.

## Calendars

- Calendario Hostal: Mon-Fri 09:00-13:00, 15:00-19:00; Sat-Sun off. Exceptions (off unless hours are given): 2018-03-17 to 2018-03-18 09:00-13:00, 15:00-19:00.

## Resources

| Resource |
| --- |
| Hugo Araya |
| Nibsa Contreras |
| Daniel Morales |
| Jordan Quiroz |
| Cristopher Torres |

## Schedule

| ID | WBS | Task | Type | Duration | Start | Finish | Predecessors | Complete | Remaining | Total slack | Free slack | Constraint | Resources | Work | Actual work |
| --- | --- | --- | --- | --- | --- | --- | --- | --- | --- | --- | --- | --- | --- | --- | --- |
| 1 | 1 | **Iteración 1:** |  | 32d | 2018-03-13 A | 2018-04-24 |  | 49% | 16.46d | 0d |  |  |  | 868h | 517.87h |
| 2 | 1.1 | **Primera Reunión** |  | 0.5d | 2018-03-13 A | 2018-03-13 A |  | 100% |  |  |  |  | Jordan Quiroz; Hugo Araya; Nibsa Contreras; Daniel Morales; Cristopher Torres | 4h | 4h |
| 3 | 1.1.1 | Charla del proyecto y presentación personal |  | 0.5d | 2018-03-13 A | 2018-03-13 A |  | 100% |  |  |  |  |  |  |  |
| 4 | 1.1.2 | Asignación de roles |  | 0.5d | 2018-03-13 A | 2018-03-13 A |  | 100% |  |  |  |  |  |  |  |
| 5 | 1.1.3 | Asignación de tareas según rol |  | 0.5d | 2018-03-13 A | 2018-03-13 A |  | 100% |  |  |  |  |  |  |  |
| 6 | 1.2 | **Análisis de Base de Datos** |  | 4d | 2018-03-14 A | 2018-03-18 |  | 99% | 0d | 0d |  |  |  | 160h | 160h |
| 7 | 1.2.1 | Reconocer Entidades |  | 1d | 2018-03-14 A | 2018-03-15 A |  | 100% |  |  |  | start no earlier than 2018-03-14 | Cristopher Torres; Daniel Morales; Hugo Araya; Jordan Quiroz; Nibsa Contreras | 40h | 40h |
| 8 | 1.2.2 | Reconocer Atributos |  | 1d | 2018-03-15 A | 2018-03-16 A | 7 | 100% |  |  |  |  | Cristopher Torres; Daniel Morales; Hugo Araya; Jordan Quiroz; Nibsa Contreras | 40h | 40h |
| 9 | 1.2.3 | Reconocer Relaciones |  | 1d | 2018-03-16 A | 2018-03-17 A | 8 | 100% |  |  |  |  | Cristopher Torres; Daniel Morales; Hugo Araya; Jordan Quiroz; Nibsa Contreras | 40h | 40h |
| 10 | 1.2.4 | Reconocer Cardinalidades |  | 1d | 2018-03-17 A | 2018-03-18 A | 9 | 100% |  |  |  |  | Cristopher Torres; Daniel Morales; Hugo Araya; Jordan Quiroz; Nibsa Contreras | 40h | 40h |
| 11 | 1.2.5 | Revisión | milestone, manual | 0d | 2018-03-18 | 2018-03-18 | 10 |  |  |  |  |  |  |  |  |
| 12 | 1.3 | **Diseño de base de datos** |  | 3d | 2018-03-21 A | 2018-03-26 | 6 | 88% | 0.35d | 20.25d |  |  |  | 24h | 21.2h |
| 13 | 1.3.1 | Creación Modelo BD en Data Modeler |  | 1d | 2018-03-21 A | 2018-03-22 |  | 95% | 0.05d | 0.95d | 0d | finish no earlier than 2018-03-22 | Cristopher Torres | 8h | 7.6h |
| 14 | 1.3.2 | Generar Script BD |  | 1d | 2018-03-22 A | 2018-03-23 | 13 | 95% | 0.05d | 0.75d | 0d |  | Cristopher Torres | 8h | 7.6h |
| 15 | 1.3.3 | Conexión Oracle Vs |  | 1d | 2018-03-23 A | 2018-03-26 | 14 | 75% | 0.25d | 20.25d | 0d |  | Cristopher Torres | 8h | 6h |
| 16 | 1.3.4 | Revisión | milestone, manual | 0d | 2018-03-26 | 2018-03-26 | 15 |  |  |  |  |  | Cristopher Torres; Daniel Morales; Hugo Araya; Jordan Quiroz; Nibsa Contreras |  |  |
| 17 | 1.4 | **Artefactos** |  | 4.75d | 2018-03-27 A | 2018-04-02 |  | 79% | 1.01d |  |  |  |  | 32h | 25.2h |
| 18 | 1.4.1 | Casos de uso |  | 1d | 2018-03-27 A | 2018-03-28 |  | 80% | 0.2d | 0.8d | 0d |  | Hugo Araya | 8h | 6.4h |
| 19 | 1.4.2 | Diagrama de Actividades |  | 1d | 2018-03-28 A | 2018-03-29 | 18 | 80% | 0.2d | 0.6d | 0d |  | Nibsa Contreras | 8h | 6.4h |
| 20 | 1.4.3 | Diagrama de Arquitectura |  | 1d | 2018-03-29 A | 2018-03-30 | 19 | 60% | 0.4d | 0.95d | 0d |  | Daniel Morales | 8h | 4.8h |
| 21 | 1.4.4 | Modelo BDD |  | 1d | 2018-03-30 A | 2018-04-02 | 20 | 95% | 0.05d | 16d | 0d |  | Cristopher Torres | 8h | 7.6h |
| 22 | 1.4.5 | Revisión | milestone, manual | 0d | 2018-04-02 | 2018-04-02 | 21 |  |  |  |  |  |  |  |  |
| 23 | 1.5 | **Documentación** |  | 5d | 2018-03-27 A | 2018-04-03 |  | 97% | 0.15d |  |  |  | Jordan Quiroz; Hugo Araya; Nibsa Contreras; Daniel Morales; Cristopher Torres | 240h | 232.8h |
| 24 | 1.5.1 | Requerimientos funcionales y no funcionales |  | 1d | 2018-03-27 A | 2018-03-28 A |  | 100% |  |  |  |  | Nibsa Contreras | 8h | 8h |
| 25 | 1.5.2 | Documento preliminar problema-solución |  | 1d | 2018-03-28 A | 2018-03-29 A | 24 | 100% |  |  |  |  | Jordan Quiroz | 8h | 8h |
| 26 | 1.5.3 | Planilla funcionalidades de Hostal |  | 1d | 2018-03-29 A | 2018-03-30 A | 25 | 100% |  |  |  |  | Hugo Araya | 8h | 8h |
| 27 | 1.5.4 | Documento Roles y Responsabilidades |  | 1d | 2018-03-30 A | 2018-04-02 A | 26 | 100% |  |  |  |  | Nibsa Contreras | 8h | 8h |
| 28 | 1.5.5 | Formateo de documentos |  | 1d | 2018-04-02 A | 2018-04-03 | 27 | 85% | 0.15d | 15d | 0d |  | Nibsa Contreras | 8h | 6.8h |
| 29 | 1.5.6 | Revisión | milestone, manual | 0d | 2018-04-03 | 2018-04-03 | 28 |  |  |  |  |  |  |  |  |

| ID | WBS | Task | Type | Duration | Start | Finish | Complete | Remaining | Total slack | Resources | Work | Actual work |
| --- | --- | --- | --- | --- | --- | --- | --- | --- | --- | --- | --- | --- |
| 30 | 1.6 | **Desarrollo vistas html** |  | 10d | 2018-04-10 A | 2018-04-24 | 17% | 8.33d |  | Jordan Quiroz; Hugo Araya; Nibsa Contreras; Daniel Morales; Cristopher Torres | 408h | 74.67h |
| 31 | 1.6.1 | Plantilla de la página con menú y módulos en html | manual | 1d | 2018-04-10 A | 2018-04-11 A | 100% |  |  | Daniel Morales | 8h | 8h |
| 32 | 1.6.2 | Formulario Registrar Cliente | manual | 1d | 2018-04-10 A | 2018-04-11 A | 100% |  |  |  |  |  |
| 33 | 1.6.3 | Formulario Listar Clientes | manual | 0.5d | 2018-04-10 A | 2018-04-10 A | 100% |  |  |  |  |  |
| 34 | 1.6.4 | Formulario Obtener Datos de Cliente | manual | 1d | 2018-04-10 A | 2018-04-11 A | 100% |  |  |  |  |  |
| 35 | 1.6.5 | Formulario Modificar Cliente | manual | 0.5d | 2018-04-10 A | 2018-04-10 A | 100% |  |  |  |  |  |
| 36 | 1.6.6 | Formulario Registrar Empresa | manual | 1d? | 2018-04-10 | 2018-04-11 |  |  |  |  |  |  |
| 37 | 1.6.7 | Formulario Listar Empresa | manual | 1d? | 2018-04-10 | 2018-04-11 |  |  |  |  |  |  |
| 38 | 1.6.8 | Formulario Obtener Datos de Empresa | manual | 1d? | 2018-04-10 | 2018-04-11 |  |  |  |  |  |  |
| 39 | 1.6.9 | Formulario Modificar Empresa | manual | 1d? | 2018-04-10 | 2018-04-11 |  |  |  |  |  |  |
| 40 | 1.6.10 | Formulario Ingresar Trabajador | manual | 1d? | 2018-04-10 | 2018-04-11 |  |  |  |  |  |  |
| 41 | 1.6.11 | Formulario Listar Trabajadores | manual | 1d? | 2018-04-10 | 2018-04-11 |  |  |  |  |  |  |
| 42 | 1.6.12 | Formulario Obtener Datos de Trabajador | manual | 1d? | 2018-04-10 | 2018-04-11 |  |  |  |  |  |  |
| 43 | 1.6.13 | Formulario Modificar Trabajador | manual | 1d? | 2018-04-10 | 2018-04-11 |  |  |  |  |  |  |
| 44 | 1.6.14 | … | manual | 1d? | 2018-04-10 | 2018-04-11 |  |  |  |  |  |  |
| 45 | 1.6.15 | **Desarrollo de validaciones** |  | 1d | 2018-04-10 | 2018-04-11 |  |  | 0d |  |  |  |
| 46 | 1.6.15.1 | Insertar clientes a la base de datos | manual | 1d? | 2018-04-10 | 2018-04-11 |  |  |  |  |  |  |
| 47 | 1.6.15.2 | Modificar datos de cliente en la bdd | manual | 1d? | 2018-04-10 | 2018-04-11 |  |  |  |  |  |  |
| 48 | 1.6.15.3 | Buscar datos de cliente en la bdd | manual | 1d? | 2018-04-10 | 2018-04-11 |  |  |  |  |  |  |
| 49 | 1.6.15.4 | Listar clientes de la bdd | manual | 1d? | 2018-04-10 | 2018-04-11 |  |  |  |  |  |  |
| 50 | 1.6.15.5 | Insertar empresas a la base de datos | manual | 1d? | 2018-04-10 | 2018-04-11 |  |  |  |  |  |  |
| 51 | 1.6.15.6 | Listar empresa de la bdd | manual | 1d? | 2018-04-10 | 2018-04-11 |  |  |  |  |  |  |
| 52 | 1.6.15.7 | Modificar datos de empresa en la bdd | manual | 1d? | 2018-04-10 | 2018-04-11 |  |  |  |  |  |  |
| 53 | 1.6.15.8 | Buscar datos de empresa en la bdd | manual | 1d? | 2018-04-10 | 2018-04-11 |  |  |  |  |  |  |
| 54 | 1.6.15.9 | <Tarea nueva> | manual | 1d? | 2018-04-10 | 2018-04-11 |  |  |  |  |  |  |
| 55 | 1.6.15.10 | <Tarea nueva> | manual | 1d? | 2018-04-10 | 2018-04-11 |  |  |  |  |  |  |
| 56 | 1.6.15.11 | <Tarea nueva> | manual | 1d? | 2018-04-10 | 2018-04-11 |  |  |  |  |  |  |

| ID | WBS | Task | Type | Duration | Start | Finish |
| --- | --- | --- | --- | --- | --- | --- |
| 57 | 2 | **Iteración 2:** |  | 1d? | 2018-03-13 | 2018-03-14 |
| 58 | 2.1 | Correcciones Iteracion 1 | manual | 1d? | 2018-03-13 | 2018-03-14 |
| 59 | 2.2 | Script de tablas,secuencias,triggers | manual | 1d? | 2018-03-13 | 2018-03-14 |
| 60 | 2.3 | Script de funciones almacenadas | manual | 1d? | 2018-03-13 | 2018-03-14 |
| 61 | 2.4 | Script de procedimientos almacenados | manual | 1d? | 2018-03-13 | 2018-03-14 |
| 62 | 2.5 | Plan de prueba | manual | 1d? | 2018-03-13 | 2018-03-14 |
| 63 | 3 | **Iteración 3:** |  | 1d | 2018-03-13 | 2018-03-14 |
| 64 | 3.1 | Plan de prueba | manual | 1d? | 2018-03-13 | 2018-03-14 |
| 65 | 3.2 | Manual de usuario | manual | 1d? | 2018-03-13 | 2018-03-14 |
| 66 | 3.3 | Analisis de Base de Datos | manual | 1d? | 2018-03-13 | 2018-03-14 |
| 67 | 3.4 | diseño de base de datos | manual | 1d? | 2018-03-13 | 2018-03-14 |
| 68 | 3.5 | PPT presentacion proyecto | manual | 1d? | 2018-03-13 | 2018-03-14 |
